id,name,discipline,area,start,finish,actual_start,actual_finish,forecast_finish,original_duration,percent_complete,budget_hours,hours_per_day,area_weight,activity_factor,ev_method,commodity,base_activity
FE-ER-010,Electrical room rough-in,FE,ER,2026-03-09,2026-04-18,2026-03-09,2026-04-21,,,1.0000,1800.00,10.0,1.0,1.0,milestone,conduit,
FE-ER-020,Set switchgear and distribution,FE,ER,2026-04-13,2026-05-16,2026-04-15,2026-05-22,,,1.0000,1600.00,10.0,1.0,1.0,milestone,switchgear,
FE-ER-030,Feeders — pull and terminate,FE,ER,2026-05-11,2026-06-27,2026-05-14,2026-07-07,,,1.0000,2800.00,10.0,1.0,1.0,milestone,wire_feeder,
FE-A1-010,Area 1 overhead rough-in,FE,A1,2026-03-23,2026-05-30,2026-03-23,2026-06-06,,,1.0000,5000.00,10.0,1.0,1.0,milestone,conduit,
FE-A1-020,Area 1 branch wire and devices,FE,A1,2026-05-18,2026-07-18,2026-05-22,2026-08-01,,,1.0000,3400.00,10.0,1.0,1.0,milestone,wire_branch,
FE-A1-030,Area 1 lighting,FE,A1,2026-06-22,2026-08-08,2026-06-26,2026-08-18,,,1.0000,2200.00,10.0,1.0,1.0,milestone,lighting_fixture,
FE-A2-010,Area 2 overhead rough-in,FE,A2,2026-05-04,2026-07-11,2026-05-13,2026-07-31,,,1.0000,4600.00,10.0,1.0,1.0,milestone,conduit,
FE-A2-020,Area 2 branch wire and devices,FE,A2,2026-06-29,2026-08-22,2026-07-11,,2026-09-15,,0.8750,3000.00,10.0,1.0,1.0,milestone,wire_branch,
FE-A2-030,Area 2 lighting,FE,A2,2026-07-27,2026-09-05,2026-08-07,,2026-09-24,,0.6341,2000.00,10.0,1.0,1.0,milestone,lighting_fixture,
FE-A3-010,Area 3 overhead rough-in,FE,A3,2026-06-15,2026-08-15,2026-06-26,,2026-09-10,,0.9531,3600.00,10.0,1.0,1.0,milestone,conduit,
FE-A3-020,Area 3 branch wire and devices,FE,A3,2026-08-03,2026-09-26,2026-08-17,,2026-10-21,,0.3214,2400.00,10.0,1.0,1.0,milestone,wire_branch,
FE-A3-030,Area 3 lighting,FE,A3,2026-09-01,2026-10-10,,,2026-10-30,,0.0000,1500.00,10.0,1.0,1.0,milestone,lighting_fixture,
FE-SITE-010,Site lighting and feeders,FE,SITE,2026-08-17,2026-10-03,2026-08-22,,2026-10-14,,0.2889,1400.00,10.0,1.0,1.0,milestone,underground,
FE-ALL-090,Equipment connections and testing,FE,ALL,2026-09-14,2026-11-07,,,2026-11-28,,0.0000,1800.00,10.0,1.0,1.0,milestone,equipment_connection,
FE-ALL-095,Temporary power maintenance,FE,ALL,2026-03-09,2026-11-14,2026-03-09,,2026-11-14,,0.7230,1000.00,10.0,1.0,1.0,loe,,
FSS-ALL-010,Fire alarm rough-in,FSS,ALL,2026-04-20,2026-07-25,2026-04-20,2026-07-25,,,1.0000,2400.00,10.0,1.0,1.0,milestone,conduit,
FSS-ALL-020,Fire alarm devices and cabling,FSS,ALL,2026-07-13,2026-09-26,2026-07-16,,2026-10-03,,0.6618,2600.00,10.0,1.0,1.0,milestone,fire_alarm_device,
FSS-ALL-030,Fire alarm programming and test,FSS,ALL,2026-09-28,2026-11-07,,,2026-11-16,,0.0000,800.00,10.0,1.0,1.0,percent,,
TEL-ALL-010,Telecom pathways,TEL,ALL,2026-05-04,2026-07-18,2026-05-04,2026-07-18,,,1.0000,2000.00,10.0,1.0,1.0,milestone,cable_tray,
TEL-ALL-020,Structured cabling — pull and terminate,TEL,ALL,2026-07-20,2026-10-03,2026-07-27,,2026-10-16,,0.5143,3400.00,10.0,1.0,1.0,milestone,telecom_drop,
TEL-ALL-030,Fiber backbone,TEL,ALL,2026-08-24,2026-10-17,2026-08-28,,2026-10-24,,0.1633,900.00,10.0,1.0,1.0,milestone,fiber,
TEL-ALL-040,Test and certify,TEL,ALL,2026-10-05,2026-11-07,,,2026-11-17,,0.0000,600.00,10.0,1.0,1.0,percent,,
